# Students Database11

Schedule from MS Project, 2013-05-01 to 2014-11-14, A marks actual dates.
PN

## Calendars

- Standard: Mon-Fri 08:00-12:00, 13:00-17:00; Sat-Sun off.

## Resources

| Resource |
| --- |
| GLC |
| ND |

## Schedule

| ID | WBS | Task | Type | Duration | Start | Finish | Total slack | Constraint |
| --- | --- | --- | --- | --- | --- | --- | --- | --- |
| 1 | 1 | **Key dates** |  | 294d? | 2013-10-01 | 2014-11-14 | 0d |  |
| 2 | 1.1 | **PNC** |  | 196d? | 2014-01-06 | 2014-10-06 | 29d |  |
| 3 | 1.1.1 | Selection starts on the field (IS) | milestone | 1d? | 2014-01-13 | 2014-01-13 | 219d | start no earlier than 2014-01-13 |
| 4 | 1.1.2 | Quarter 2 | milestone | 1d? | 2014-01-06 | 2014-01-06 | 224d | start no earlier than 2014-01-06 |
| 5 | 1.1.3 | Quarter 3 | milestone | 1d? | 2014-04-01 | 2014-04-01 | 163d | start no earlier than 2014-04-01 |
| 6 | 1.1.4 | Internship 1rst year | milestone | 1d? | 2014-03-31 | 2014-03-31 | 164d | start no earlier than 2014-03-31 |
| 7 | 1.1.5 | Internship 2nd year | milestone | 1d? | 2014-06-02 | 2014-06-02 | 119d | start no earlier than 2014-06-02 |
| 8 | 1.1.6 | Quarter 4 | milestone | 1d? | 2014-07-01 | 2014-07-01 | 98d | start no earlier than 2014-07-01 |
| 9 | 1.1.7 | End of selection / enrollment of students | milestone | 1d? | 2014-09-01 | 2014-09-01 | 54d | start no earlier than 2014-09-01 |
| 10 | 1.1.8 | Graduation SNA/WEP / new alumni | milestone | 1d? | 2014-09-19 | 2014-09-19 | 40d | start no earlier than 2014-09-19 |
| 11 | 1.1.9 | Start selection (contacts) | milestone | 1d? | 2014-10-06 | 2014-10-06 | 29d | start no earlier than 2014-10-06 |
| 12 | 1.1.10 | Quarter 1 / new school year | milestone | 1d? | 2014-09-29 | 2014-09-29 | 34d | start no earlier than 2014-09-29 |
| 13 | 1.2 | **PNP** |  | 294d? | 2013-10-01 | 2014-11-14 | 0d |  |
| 14 | 1.2.1 | Graduation / new alumni | milestone | 1d? | 2014-03-21 | 2014-03-21 | 170d | start no earlier than 2014-03-21 |
| 15 | 1.2.2 | End of selection / enrollment | milestone | 1d? | 2014-05-05 | 2014-05-05 | 139d | start no earlier than 2014-05-05 |
| 16 | 1.2.3 | Semester 1 (2014) / new school year | milestone | 1d? | 2014-06-02 | 2014-06-02 | 119d | start no earlier than 2014-06-02 |
| 17 | 1.2.4 | Start of selection (Contacts) | milestone | 1d? | 2014-09-01 | 2014-09-01 | 54d | start no earlier than 2014-09-01 |
| 18 | 1.2.5 | Start selection (on field) | milestone | 1d? | 2013-10-01 | 2013-10-01 | 293d | start no earlier than 2013-10-01 |
| 19 | 1.2.6 | Start internship Batch 2015 | milestone | 1d? | 2013-11-15 | 2013-11-15 | 260d | start no earlier than 2013-11-15 |
| 20 | 1.2.7 | Start internship Batch 2016 | milestone | 1d? | 2014-11-14 | 2014-11-14 | 0d | start no earlier than 2014-11-14 |
| 21 | 1.2.8 | Semester 2 (2013) | milestone | 1d? | 2013-11-01 | 2013-11-01 | 270d | start no earlier than 2013-11-01 |
| 22 | 1.2.9 | Semester 2 (2014) | milestone | 1d? | 2014-11-03 | 2014-11-03 | 9d | start no earlier than 2014-11-03 |
| 23 | 1.3 | **PNV** |  | 191d? | 2014-01-06 | 2014-09-29 | 34d |  |
| 24 | 1.3.1 | Start of selection | milestone | 1d? | 2014-01-06 | 2014-01-06 | 224d | start no earlier than 2014-01-06 |
| 25 | 1.3.2 | Internship 2 | milestone | 1d? | 2014-04-28 | 2014-04-28 | 144d | start no earlier than 2014-04-28 |
| 26 | 1.3.3 | Internship 1 | milestone | 1d? | 2014-06-02 | 2014-06-02 | 119d | start no earlier than 2014-06-02 |
| 27 | 1.3.4 | End of selection / enrollment / new school year | milestone | 1d? | 2014-09-01 | 2014-09-01 | 54d | start no earlier than 2014-09-01 |
| 28 | 1.3.5 | Graduation / new alumni | milestone | 1d? | 2014-09-29 | 2014-09-29 | 34d | start no earlier than 2014-09-29 |

| ID | WBS | Task | Duration | Start | Finish | Predecessors | Complete | Remaining | Total slack | Free slack | Constraint | Deadline | Resources | Work | Actual work |
| --- | --- | --- | --- | --- | --- | --- | --- | --- | --- | --- | --- | --- | --- | --- | --- |
| 29 | 2 | **v0.1** | 121.5d? | 2013-05-01 A | 2013-10-17 |  | 23% | 93.13d? | -13.5d | 0d |  | 2013-09-27 |  | 706h | 129.95h |
| 30 | 2.1 | **Development** | 102d? | 2013-05-01 A | 2013-09-19 |  | 31% | 70.04d? | -13.5d | 0d |  |  |  | 498h | 129.95h |
| 31 | 2.1.1 | **Common** | 49d? | 2013-05-01 A | 2013-07-08 |  | 72% | 13.72d? | 39.5d |  |  |  |  | 27h | 22.4h |
| 32 | 2.1.1.1 | **Localization** | 47.4d? | 2013-05-01 A | 2013-07-05 |  | 80% | 9.48d? | 41.1d |  |  |  |  | 13h | 10.4h |
| 33 | 2.1.1.1.1 | PHP | 1d? | 2013-05-01 A | 2013-07-05 |  | 80% | 0.2d? | 41.3d |  |  |  | GLC | 8h | 6.4h |
| 34 | 2.1.1.1.2 | JavaScript | 1d? | 2013-05-01 A | 2013-07-05 |  | 80% | 0.2d? | 41.1d |  |  |  | GLC [62.5%] | 5h | 4h |
| 35 | 2.1.1.2 | **Database** | 47.4d? | 2013-05-02 A | 2013-07-08 |  | 67% | 15.8d? | 39.5d |  |  |  |  | 14h | 12h |
| 36 | 2.1.1.2.1 | Abstraction | 1d? | 2013-05-02 A | 2013-05-03 A |  | 100% |  |  |  |  |  | GLC [50%] | 4h | 4h |
| 37 | 2.1.1.2.2 | Configuration by project | 1d? | 2013-07-08 | 2013-07-08 |  |  |  | 39.5d |  | start no earlier than 2013-07-05 |  | GLC [25%] | 2h |  |
| 38 | 2.1.1.2.3 | Locks | 1d? | 2013-05-14 A | 2013-05-15 A |  | 100% |  |  |  |  |  | GLC | 8h | 8h |
| 39 | 2.1.2 | **Application** | 41.53d? | 2013-05-13 A | 2013-07-10 |  | 92% | 3.19d? | 38.37d |  |  |  |  | 16h | 14h |
| 40 | 2.1.2.1 | General Layout | 1.25d? | 2013-06-06 A | 2013-07-10 |  | 80% | 0.25d? | 38.37d |  |  |  | GLC | 10h | 8h |
| 41 | 2.1.2.2 | Login / logout | 1d? | 2013-06-03 A | 2013-06-04 A |  | 100% |  |  |  |  |  | GLC [50%] | 4h | 4h |
| 42 | 2.1.2.3 | Database selection | 1d? | 2013-05-13 A | 2013-05-14 A |  | 100% |  |  |  |  |  | GLC [25%] | 2h | 2h |
| 43 | 2.1.3 | **Data model** | 57.58d? | 2013-05-03 A | 2013-07-24 |  | 68% | 18.15d? | 28.32d |  |  |  |  | 107h | 71.55h |
| 44 | 2.1.3.1 | **Model specification** | 57.58d? | 2013-05-03 A | 2013-07-24 | 36 | 67% | 18.99d? | 28.32d |  |  |  |  | 70h | 45.6h |
| 45 | 2.1.3.1.1 | Basics | 5d? | 2013-05-03 A | 2013-05-10 A |  | 100% |  |  |  |  |  | GLC | 40h | 40h |
| 46 | 2.1.3.1.2 | Sub-model | 2d? | 2013-07-04 A | 2013-07-12 |  | 10% | 1.8d? | 19.87d | 21.87d | start no earlier than 2013-07-05 |  | GLC | 16h | 1.6h |
| 47 | 2.1.3.1.3 | Specific tables | 1.25d? | 2013-07-22 | 2013-07-24 |  |  |  | 28.32d |  | start no earlier than 2013-07-05 |  | GLC | 10h |  |
| 48 | 2.1.3.1.4 | Hidden data | 1d? | 2013-05-15 A | 2013-05-16 A |  | 100% |  |  |  |  |  | GLC [50%] | 4h | 4h |
| 49 | 2.1.3.2 | **Views** | 42.28d? | 2013-05-10 A | 2013-07-09 |  | 71% | 12.22d? | 38.62d |  |  |  |  | 37h | 25.95h |
| 50 | 2.1.3.2.1 | Data list | 3.12d? | 2013-05-16 A | 2013-07-09 | 45 | 75% | 0.78d? | 38.62d |  |  |  | GLC | 25h | 18.75h |
| 51 | 2.1.3.2.2 | Entity | 1d? | 2013-05-10 A | 2013-07-05 | 45 | 80% | 0.2d? | 40.9d |  |  |  | GLC [50%] | 4h | 3.2h |
| 52 | 2.1.3.2.3 | Entity list | 1d? | 2013-05-16 A | 2013-07-09 | 45 | 50% | 0.5d? | 39.4d |  |  |  | GLC | 8h | 4h |

| ID | WBS | Task | Duration | Start | Finish | Predecessors | Complete | Remaining | Total slack | Free slack | Constraint | Resources | Work | Actual work |
| --- | --- | --- | --- | --- | --- | --- | --- | --- | --- | --- | --- | --- | --- | --- |
| 53 | 2.1.4 | **Authentication** | 46.33d? | 2013-05-15 A | 2013-07-18 |  | 17% | 38.61d? | 31.57d |  |  |  | 44h | 4h |
| 54 | 2.1.4.1 | Abstraction layer | 1d? | 2013-05-15 A | 2013-05-16 A |  | 100% |  |  |  |  | GLC [50%] | 4h | 4h |
| 55 | 2.1.4.2 | Implementation PNP | 5d? | 2013-07-10 | 2013-07-18 |  |  |  | 31.57d |  | start no earlier than 2013-07-05 | GLC | 40h |  |
| 56 | 2.1.5 | **User Management** | 58.13d? | 2013-05-01 A | 2013-07-22 |  | 71% | 16.61d? | 29.57d |  |  |  | 34h | 18h |
| 57 | 2.1.5.1 | List of users | 1d? | 2013-05-23 A | 2013-05-24 A |  | 100% |  |  |  |  | GLC | 8h | 8h |
| 58 | 2.1.5.2 | Import users | 2d? | 2013-07-18 | 2013-07-22 |  |  |  | 29.57d |  | start no earlier than 2013-07-05 | GLC | 16h |  |
| 59 | 2.1.5.3 | User rights | 1d? | 2013-05-13 A | 2013-05-14 A |  | 100% |  |  |  |  | GLC [50%] | 4h | 4h |
| 60 | 2.1.5.4 | Roles | 1d? | 2013-05-02 A | 2013-05-10 A |  | 100% |  |  |  |  | GLC [25%] | 2h | 2h |
| 61 | 2.1.5.5 | Role rights | 1d? | 2013-05-02 A | 2013-05-03 A |  | 100% |  |  |  |  | GLC [25%] | 2h | 2h |
| 62 | 2.1.5.6 | Assign roles to users | 1d? | 2013-05-01 A | 2013-05-02 A |  | 100% |  |  |  |  | GLC [25%] | 2h | 2h |
| 63 | 2.1.6 | Staff | 1d? | 2013-07-08 | 2013-07-08 |  |  |  | 14.5d | 24d | start no earlier than 2013-07-05 | GLC [50%] | 4h |  |
| 64 | 2.1.7 | **Selection** | 34d? | 2013-08-05 | 2013-09-19 |  |  |  | -13.5d | 0d |  |  | 266h |  |
| 65 | 2.1.7.1 | Create / remove / rename zones | 1d? | 2013-08-05 | 2013-08-05 |  |  |  | -10.5d | 0d |  | ND | 8h |  |
| 66 | 2.1.7.2 | Create / remove / rename exam centers in zone | 1d? | 2013-08-06 | 2013-08-06 | 65 |  |  | -9.5d | 0d |  | ND | 8h |  |
| 67 | 2.1.7.3 | Exam center rooms and capacity | 1d? | 2013-08-07 | 2013-08-07 | 66 |  |  | -9.5d | 0d |  | ND | 8h |  |
| 68 | 2.1.7.4 | Schedule exams | 2d? | 2013-08-08 | 2013-08-09 | 67 |  |  | -9.5d | 0d |  | ND | 16h |  |
| 69 | 2.1.7.5 | Assign staff to exams | 1d? | 2013-09-13 | 2013-09-13 | 68, 63 |  |  | -9.5d | 0d |  | ND | 8h |  |
| 70 | 2.1.7.6 | Hard-code application form specific data | 1d? | 2013-08-12 | 2013-08-12 |  |  |  | -2d | 0d |  | ND | 8h |  |
| 71 | 2.1.7.7 | Import application forms hard-code | 4d? | 2013-08-13 | 2013-08-16 | 68, 46, 70 |  |  | -2d | 0d |  | ND | 32h |  |
| 72 | 2.1.7.8 | Specify exam subjects structure | 1d? | 2013-08-20 | 2013-08-20 |  |  |  | -4d | 0d |  | ND | 8h |  |
| 73 | 2.1.7.9 | Enter exam attendance | 1d? | 2013-08-19 | 2013-08-19 | 68 |  |  | -3d | 0d |  | ND [50%] | 4h |  |
| 74 | 2.1.7.10 | Import exam results | 1d? | 2013-08-21 | 2013-08-21 | 73, 72, 71 |  |  | -4d | 0d |  | ND | 8h |  |
| 75 | 2.1.7.11 | Specify eligibility rules | 2d? | 2013-08-28 | 2013-08-29 | 74 |  |  | -4d | 0d |  | ND | 16h |  |
| 76 | 2.1.7.12 | Evaluate eligibility | 1d? | 2013-09-02 | 2013-09-02 | 75 |  |  | -2.5d | 0d |  | ND | 8h |  |
| 77 | 2.1.7.13 | Create / remove / rename interview center in zone | 1d? | 2013-08-30 | 2013-08-30 | 65 |  |  | -10.5d | 0d |  | ND | 8h |  |
| 78 | 2.1.7.14 | Reuse exam center as interview center in zone | 1d? | 2013-08-19 | 2013-08-19 | 66 |  |  | 9.5d |  |  | ND [25%] | 2h |  |
| 79 | 2.1.7.15 | Schedule interviews | 1d? | 2013-09-05 | 2013-09-05 | 77 |  |  | -12.5d | 0d |  | ND | 8h |  |
| 80 | 2.1.7.16 | Assign staff to interviews | 1d? | 2013-09-16 | 2013-09-16 | 79, 63 |  |  | -10.5d | 0d |  | ND [50%] | 4h |  |
| 81 | 2.1.7.17 | Assign applicants to interview center | 1d? | 2013-09-06 | 2013-09-06 | 79, 76 |  |  | -5.5d | 0d |  | ND | 8h |  |
| 82 | 2.1.7.18 | Specify interview structure | 1d? | 2013-09-11 | 2013-09-11 |  |  |  | -8.5d | 0d |  | ND | 8h |  |
| 83 | 2.1.7.19 | Enter interview results and attendance | 1d? | 2013-09-12 | 2013-09-12 | 81, 82 |  |  | -8.5d | 0d |  | ND | 8h |  |
| 84 | 2.1.7.20 | Specify eligibility rules | 2d? | 2013-09-09 | 2013-09-10 |  |  |  | -13.5d | 0d |  | ND | 16h |  |
| 85 | 2.1.7.21 | Evaluate eligibility rules | 1d? | 2013-09-19 | 2013-09-19 | 84 |  |  | -13.5d | 0d |  | ND | 8h |  |
| 86 | 2.1.7.22 | Plan social investigations | 3d? | 2013-08-22 | 2013-08-26 |  |  |  | -13d | 0d |  | ND | 24h |  |
| 87 | 2.1.7.23 | Enter social investigations results | 1d? | 2013-08-27 | 2013-08-27 | 86 |  |  | -13d | 0d |  | ND | 8h |  |
| 88 | 2.1.7.24 | Final choice of students | 2d? | 2013-09-03 | 2013-09-04 | 87 |  |  | -13d | 0d |  | ND | 16h |  |
| 89 | 2.1.7.25 | Accept / reject from students / waiting list | 2d? | 2013-09-17 | 2013-09-18 | 88 |  |  | -12.5d | 0d |  | ND | 16h |  |
| 90 | 2.2 | Deployment | 5d? | 2013-09-20 | 2013-09-26 | 30 |  |  | -13.5d | 0d |  | GLC | 40h |  |

| ID | WBS | Task | Duration | Start | Finish | Predecessors | Total slack | Free slack | Resources | Work |
| --- | --- | --- | --- | --- | --- | --- | --- | --- | --- | --- |
| 91 | 2.3 | **Tests** | 14.5d? | 2013-09-27 | 2013-10-17 | 90 | -13.5d | 0d |  | 168h |
| 92 | 2.3.1 | Test with previous selection data | 5d? | 2013-09-27 | 2013-10-03 |  | -11d | 0d | ND | 40h |
| 93 | 2.3.2 | Fixes and improvments | 5d? | 2013-09-27 | 2013-10-08 |  | -13.5d | 0d | ND; GLC | 40h |
| 94 | 2.3.3 | Test with selection team | 3d? | 2013-10-08 | 2013-10-11 | 92, 93 | -11d | 0d | ND | 24h |
| 95 | 2.3.4 | Fixes and improvments | 5d? | 2013-10-08 | 2013-10-15 | 92, 93 | -13.5d | 0d | ND; GLC | 40h |
| 96 | 2.3.5 | Finalization | 1.5d? | 2013-10-16 | 2013-10-17 | 94, 95 | -13.5d | 0d | ND; GLC | 24h |
| 97 | 3 | **next** | 1d? | 2013-05-01 | 2013-05-01 |  | 402d |  |  |  |
| 98 | 3.1 | **Authentication** | 1d? | 2013-05-01 | 2013-05-01 |  | 402d |  |  |  |
| 99 | 3.1.1 | Implementation PNC | 1d? | 2013-05-01 | 2013-05-01 |  | 402d |  |  |  |
| 100 | 3.1.2 | Implementation PNV | 1d? | 2013-05-01 | 2013-05-01 |  | 402d |  |  |  |
